# elaboration_project_plan

Schedule from MS Project, 2006-11-01 to 2007-02-28, A marks actual dates.
Duke University

## Calendars

- Standard: Mon-Fri 08:00-12:00, 13:00-17:00; Sat-Sun off.

## Resources

| Resource |
| --- |
| Patrick |
| Ram |
| Elaborators |
| PriyatamElaborators |
| Development team |
| Pri |
| Priyatam |
| Ramakrishna |
| Kruttik |
| Manav |
| Developers |

## Schedule

| ID | WBS | Task | Duration | Start | Finish | Predecessors | Complete | Remaining | Total slack |
| --- | --- | --- | --- | --- | --- | --- | --- | --- | --- |
| 1 | 1 | **Iteration 1** | 22d | 2006-11-01 A | 2006-11-30 |  | 84% | 3.52d | 64d |
| 2 | 1.1 | **Project Management** | 22d | 2006-11-01 A | 2006-11-30 A |  | 100% |  |  |
| 3 | 1.1.1 | Draft project plan (task 1.1) | 10d | 2006-11-01 A | 2006-11-14 A |  | 100% |  |  |
| 4 | 1.1.2 | Draft communication plan (task 1.2) | 13d | 2006-11-01 A | 2006-11-17 A |  | 100% |  |  |
| 5 | 1.1.3 | Draft risk matrix (task 1.4.1) | 10d | 2006-11-01 A | 2006-11-14 A |  | 100% |  |  |
| 6 | 1.1.4 | Update risk matrix (task 1.3.1) | 12d | 2006-11-15 A | 2006-11-30 A | 5 | 100% |  |  |
| 7 | 1.1.5 | Monthly report (task 1.3.1) | 22d | 2006-11-01 A | 2006-11-30 A |  | 100% |  |  |
| 8 | 1.1.6 | Adoption Collaboration Report (task 1.7) | 22d | 2006-11-01 A | 2006-11-30 A |  | 100% |  |  |
| 9 | 1.1.7 | Test plan document (task 2.6.1) | 22d | 2006-11-01 A | 2006-11-30 A |  | 100% |  |  |
| 10 | 1.2 | **Requirements** | 22d | 2006-11-01 A | 2006-11-30 |  | 73% | 6.05d | 64d |
| 11 | 1.2.1 | Draft meeting notes from face-to-face (task 1.5) | 18d | 2006-11-01 A | 2006-11-24 A |  | 100% |  |  |
| 12 | 1.2.2 | Refine vision and scope document (task 1.8) | 18d | 2006-11-01 A | 2006-11-24 A |  | 100% |  |  |
| 13 | 1.2.3 | Draft level 1 use cases (task 2.1.1) | 22d | 2006-11-01 A | 2006-11-30 A |  | 100% |  |  |
| 14 | 1.2.4 | SRS document (task 2.2.1) | 22d | 2006-11-01 | 2006-11-30 |  |  |  | 64d |
| 15 | 1.3 | **Analysis and Design** | 22d | 2006-11-01 A | 2006-11-30 |  | 82% | 3.9d | 64d |
| 16 | 1.3.1 | Design document (task 2.4.1) | 22d | 2006-11-01 | 2006-11-30 |  |  |  | 64d |
| 17 | 1.3.2 | UML diagrams (task 2.3.1) | 22d | 2006-11-01 A | 2006-11-30 A |  | 100% |  |  |
| 18 | 1.3.3 | **ESB** | 22d | 2006-11-01 A | 2006-11-30 A |  | 100% |  |  |
| 19 | 1.3.3.1 | Evalutate technologies by prototyping | 22d | 2006-11-01 A | 2006-11-30 A |  | 100% |  |  |
| 20 | 1.3.4 | **Grid service** | 7d | 2006-11-01 A | 2006-11-09 A |  | 100% |  |  |
| 21 | 1.3.4.1 | Evaluate caGrid 1.0 service infrastructure | 7d | 2006-11-01 A | 2006-11-09 A |  | 100% |  |  |
| 22 | 1.3.5 | **Database** | 7d | 2006-11-01 A | 2006-11-09 A |  | 100% |  |  |
| 23 | 1.3.5.1 | First draft of protocol database structure | 7d | 2006-11-01 A | 2006-11-09 A |  | 100% |  |  |
| 24 | 1.3.6 | **Domain model** | 22d | 2006-11-01 A | 2006-11-30 A |  | 100% |  |  |
| 25 | 1.3.6.1 | Create protocol model with harmonized with BRIDG | 11d | 2006-11-01 A | 2006-11-15 A |  | 100% |  |  |
| 26 | 1.3.6.2 | Create first draft of protocol model | 11d | 2006-11-16 A | 2006-11-30 A | 25 | 100% |  |  |

| ID | WBS | Task | Duration | Start | Finish | Predecessors | Complete | Remaining | Total slack | Free slack | Resources | Work |
| --- | --- | --- | --- | --- | --- | --- | --- | --- | --- | --- | --- | --- |
| 27 | 1.3.7 | **Security** | 22d | 2006-11-01 A | 2006-11-30 A |  | 100% |  |  |  |  |  |
| 28 | 1.3.7.1 | Evaluate caGrid 1.0 security infrastructure | 22d | 2006-11-01 A | 2006-11-30 A |  | 100% |  |  |  |  |  |
| 29 | 1.4 | **Implementation** | 22d | 2006-11-01 A | 2006-11-30 |  | 88% | 2.53d | 64d |  |  |  |
| 30 | 1.4.1 | **Web interface** | 22d | 2006-11-01 A | 2006-11-30 A |  | 100% |  |  |  |  |  |
| 31 | 1.4.1.1 | Migrate v1 code into codebase | 22d | 2006-11-01 A | 2006-11-30 A |  | 100% |  |  |  |  |  |
| 32 | 1.4.2 | **Enterprise Service Bus** | 22d | 2006-11-01 A | 2006-11-30 A |  | 100% |  |  |  |  |  |
| 33 | 1.4.2.1 | Setup initial project | 22d | 2006-11-01 A | 2006-11-30 A |  | 100% |  |  |  |  |  |
| 34 | 1.4.3 | **Grid service** | 15d | 2006-11-10 A | 2006-11-30 A |  | 100% |  |  |  |  |  |
| 35 | 1.4.3.1 | Create grid service skeleton | 15d | 2006-11-10 A | 2006-11-30 A | 21 | 100% |  |  |  |  |  |
| 36 | 1.4.4 | **Database** | 22d | 2006-11-01 A | 2006-11-30 A |  | 100% |  |  |  |  |  |
| 37 | 1.4.4.1 | Migrate v1 code into codebase | 22d | 2006-11-01 A | 2006-11-30 A |  | 100% |  |  |  |  |  |
| 38 | 1.4.4.2 | Implement protocol database structure | 22d | 2006-11-01 A | 2006-11-30 A |  | 100% |  |  |  |  |  |
| 39 | 1.4.5 | **Domain model** | 22d | 2006-11-01 A | 2006-11-30 A |  | 100% |  |  |  |  |  |
| 40 | 1.4.5.1 | Migrate v1 code into codebase | 22d | 2006-11-01 A | 2006-11-30 A |  | 100% |  |  |  |  |  |
| 41 | 1.4.5.2 | Implement protocol model | 15d | 2006-11-01 A | 2006-11-21 A |  | 100% |  |  |  |  |  |
| 42 | 1.4.5.3 | Create OR mapping for protocol model | 7d | 2006-11-22 A | 2006-11-30 A | 41 | 100% |  |  |  |  |  |
| 43 | 1.4.6 | **Business layer** | 22d | 2006-11-01 A | 2006-11-30 A |  | 100% |  |  |  |  |  |
| 44 | 1.4.6.1 | Migrate v1 code | 22d | 2006-11-01 A | 2006-11-30 A |  | 100% |  |  |  |  |  |
| 45 | 1.4.7 | Prototype code (task 2.5.1) | 22d | 2006-11-01 | 2006-11-30 |  |  |  | 64d |  |  |  |
| 46 | 1.5 | **Testing** | 22d | 2006-11-01 A | 2006-11-30 |  | 50% | 11d | 64d |  |  |  |
| 47 | 1.5.1 | Implement unit tests | 22d | 2006-11-01 A | 2006-11-30 A |  | 100% |  |  |  |  |  |
| 48 | 1.5.2 | Test report (task 2.7.1) | 22d | 2006-11-01 | 2006-11-30 |  |  |  | 64d |  |  |  |
| 49 | 2 | **Iteration 2** | 21d | 2006-12-01 | 2006-12-29 | 27, 1 |  |  | 0d |  |  | 11656h |
| 50 | 2.1 | **Project Management** | 21d | 2006-12-01 | 2006-12-29 |  |  |  | 43d |  | Patrick | 840h |
| 51 | 2.1.1 | Update risk matrix (task 1.4.2) | 11d | 2006-12-01 | 2006-12-15 |  |  |  | 43d | 0d | Patrick | 88h |
| 52 | 2.1.2 | Update risk matrix (task 1.3.2) | 10d | 2006-12-18 | 2006-12-29 | 51 |  |  | 43d |  | Patrick | 80h |
| 53 | 2.1.3 | Monthly report (task 1.3.2) | 21d | 2006-12-01 | 2006-12-29 |  |  |  | 43d |  | Patrick | 168h |
| 54 | 2.1.4 | Adoption Collaboration Report (task 1.7) | 21d | 2006-12-01 | 2006-12-29 |  |  |  | 43d |  | Patrick | 168h |
| 55 | 2.1.5 | Test plan document (task 2.6.2) | 21d | 2006-12-01 | 2006-12-29 |  |  |  | 43d |  | Patrick | 168h |

| ID | WBS | Task | Duration | Start | Finish | Predecessors | Total slack | Free slack | Resources | Work |
| --- | --- | --- | --- | --- | --- | --- | --- | --- | --- | --- |
| 56 | 2.2 | **Requirements** | 21d | 2006-12-01 | 2006-12-29 |  | 43d |  | Ram; Elaborators | 2520h |
| 57 | 2.2.1 | **Use case document** | 21d | 2006-12-01 | 2006-12-29 |  | 43d |  | Ram; Elaborators | 2016h |
| 58 | 2.2.1.1 | Develop C3PR integration use cases (implementation) (task 2.1.2) | 21d | 2006-12-01 | 2006-12-29 |  | 43d |  | Ram; Elaborators | 336h |
| 59 | 2.2.1.2 | Develop Study Calendar integration use cases (implementation) (task 2.1.2) | 21d | 2006-12-01 | 2006-12-29 |  | 43d |  | Ram; Elaborators | 336h |
| 60 | 2.2.1.3 | Develop participant management use cases (implementation) (task 2.1.2) | 21d | 2006-12-01 | 2006-12-29 |  | 43d |  | Ram; Elaborators | 336h |
| 61 | 2.2.1.4 | Refine protocol management use cases (task 2.1.2) | 21d | 2006-12-01 | 2006-12-29 |  | 43d |  | Ram; Priyatam; Elaborators | 504h |
| 62 | 2.2.1.5 | Elaborator review of use case document | 21d | 2006-12-01 | 2006-12-29 |  | 43d |  | Elaborators | 168h |
| 63 | 2.2.2 | SRS document (task 2.2.2) | 21d | 2006-12-01 | 2006-12-29 |  | 43d |  | Ram | 168h |
| 64 | 2.3 | **Analysis and Design** | 21d | 2006-12-01 | 2006-12-29 |  | 43d |  |  | 1848h |
| 65 | 2.3.1 | UML diagrams (task 2.3.2) | 21d | 2006-12-01 | 2006-12-29 |  | 43d |  | Development team | 168h |
| 66 | 2.3.2 | Design document (task 2.4.2) | 21d | 2006-12-01 | 2006-12-29 |  | 43d |  | Development team | 168h |
| 67 | 2.3.3 | **Doman model** | 21d | 2006-12-01 | 2006-12-29 |  | 43d |  | Ram; Priyatam; Ramakrishna | 1512h |
| 68 | 2.3.3.1 | Harmonize participant model with BRIDG | 11d | 2006-12-01 | 2006-12-15 |  | 43d | 0d | Ram; Priyatam; Ramakrishna | 264h |
| 69 | 2.3.3.2 | Create participant model | 10d | 2006-12-18 | 2006-12-29 | 68 | 43d |  | Ram; Priyatam; Ramakrishna | 240h |
| 70 | 2.3.3.3 | Revise protocol model (including BRIDG harmonization) | 21d | 2006-12-01 | 2006-12-29 |  | 43d |  | Ram; Priyatam; Ramakrishna | 504h |
| 71 | 2.4 | **Implementation** | 21d | 2006-12-01 | 2006-12-29 |  | 0d |  |  | 5776h |
| 72 | 2.4.1 | **Web interface** | 21d | 2006-12-01 | 2006-12-29 |  | 43d |  | Priyatam; Kruttik | 1264h |
| 73 | 2.4.1.1 | First pass at dynamic interface | 5d | 2006-12-01 | 2006-12-07 |  | 43d | 0d | Priyatam; Kruttik | 80h |
| 74 | 2.4.1.2 | Add registration tab | 16d | 2006-12-08 | 2006-12-29 | 73 | 43d |  | Priyatam; Kruttik | 256h |
| 75 | 2.4.1.3 | Implement protocol management interface | 16d | 2006-12-08 | 2006-12-29 | 73 | 43d |  | Priyatam; Kruttik | 256h |
| 76 | 2.4.1.4 | Point login module to Dorian (IdP service) | 21d | 2006-12-01 | 2006-12-29 |  | 43d |  | Priyatam; Kruttik | 336h |
| 77 | 2.4.2 | **Enterprise Service Bus** | 21d | 2006-12-01 | 2006-12-29 |  | 43d |  | Manav; Kruttik | 944h |
| 78 | 2.4.2.1 | Implement protocol creation message router | 5d | 2006-12-01 | 2006-12-07 |  | 53d | 0d | Manav; Kruttik | 80h |
| 79 | 2.4.2.2 | Implement protocol creation message handler for C3PR | 6d | 2006-12-08 | 2006-12-15 | 78 | 53d |  | Manav; Kruttik | 96h |
| 80 | 2.4.2.3 | Implement protocol creation message handler for Study Calendar | 6d | 2006-12-08 | 2006-12-15 | 78 | 53d |  | Manav; Kruttik | 96h |
| 81 | 2.4.2.4 | Integrate caGrid security delegation | 21d | 2006-12-01 | 2006-12-29 |  | 43d |  | Manav; Kruttik | 336h |

| ID | WBS | Task | Duration | Start | Finish | Predecessors | Total slack | Resources | Work |
| --- | --- | --- | --- | --- | --- | --- | --- | --- | --- |
| 82 | 2.4.3 | **Grid service** | 21d | 2006-12-01 | 2006-12-29 |  | 43d | Manav | 336h |
| 83 | 2.4.3.1 | Implement protocol creation service | 21d | 2006-12-01 | 2006-12-29 |  | 43d | Manav | 168h |
| 84 | 2.4.4 | **Database** | 21d | 2006-12-01 | 2006-12-29 |  | 43d | Ram; Priyatam; Ramakrishna | 1008h |
| 85 | 2.4.4.1 | Update database with protocol changes | 21d | 2006-12-01 | 2006-12-29 |  | 43d | Ram; Priyatam; Ramakrishna | 504h |
| 86 | 2.4.5 | **Domain model** | 21d | 2006-12-01 | 2006-12-29 |  | 43d | Priyatam; Ramakrishna | 1008h |
| 87 | 2.4.5.1 | Implement protocol model revisions | 21d | 2006-12-01 | 2006-12-29 |  | 43d | Priyatam; Ramakrishna | 336h |
| 88 | 2.4.5.2 | Implement participant model | 21d | 2006-12-01 | 2006-12-29 |  | 43d | Priyatam; Ramakrishna | 336h |
| 89 | 2.4.6 | **Security** | 21d | 2006-12-01 | 2006-12-29 |  | 0d | Manav | 376h |
| 90 | 2.4.6.1 | Deploy Dorian | 16d | 2006-12-01 | 2006-12-22 |  | 0d | Manav | 128h |
| 91 | 2.4.6.2 | Setup Dorian users | 5d | 2006-12-25 | 2006-12-29 | 90 | 0d | Manav | 40h |
| 92 | 2.4.6.3 | Setup IdP service | 5d | 2006-12-25 | 2006-12-29 | 90 | 0d | Manav | 40h |
| 93 | 2.4.7 | **Business layer** | 21d | 2006-12-01 | 2006-12-29 |  | 43d | Priyatam; Kruttik | 672h |
| 94 | 2.4.7.1 | Implement protocol creation service | 21d | 2006-12-01 | 2006-12-29 |  | 43d | Priyatam; Kruttik | 336h |
| 95 | 2.4.8 | Prototype code (task 2.5.2) | 21d | 2006-12-01 | 2006-12-29 |  | 43d | Patrick | 168h |
| 96 | 2.5 | **Testing** | 21d | 2006-12-01 | 2006-12-29 |  | 43d | Developers; Patrick | 672h |
| 97 | 2.5.1 | Create unit tests | 21d | 2006-12-01 | 2006-12-29 |  | 43d | Developers | 168h |
| 98 | 2.5.2 | Test report (task 2.7.2) | 21d | 2006-12-01 | 2006-12-29 |  | 43d | Patrick | 168h |
| 99 | 3 | **Iteration 3** | 33d | 2007-01-01 | 2007-02-14 | 89 | 0d |  | 11416h |
| 100 | 3.1 | **Project Management** | 23d | 2007-01-01 | 2007-01-31 |  | 20d | Patrick | 1000h |
| 101 | 3.1.1 | Update risk matrix | 10d | 2007-01-01 | 2007-01-12 |  | 33d | Patrick | 80h |
| 102 | 3.1.2 | Update risk matrix | 23d | 2007-01-01 | 2007-01-31 |  | 20d | Patrick | 184h |
| 103 | 3.1.3 | Monthly report | 23d | 2007-01-01 | 2007-01-31 |  | 20d | Patrick | 184h |
| 104 | 3.1.4 | Adoption Collaboration Report | 23d | 2007-01-01 | 2007-01-31 |  | 20d | Patrick | 184h |
| 105 | 3.1.5 | Test plan document | 23d | 2007-01-01 | 2007-01-31 |  | 20d | Patrick | 184h |

| ID | WBS | Task | Duration | Start | Finish | Predecessors | Total slack | Free slack | Resources | Work |
| --- | --- | --- | --- | --- | --- | --- | --- | --- | --- | --- |
| 106 | 3.2 | **Requirements** | 23d | 2007-01-01 | 2007-01-31 |  | 20d |  |  | 3496h |
| 107 | 3.2.1 | **Use case document** | 23d | 2007-01-01 | 2007-01-31 |  | 20d |  | Ram; Elaborators; Priyatam | 3312h |
| 108 | 3.2.1.1 | Refine protocol management use cases | 23d | 2007-01-01 | 2007-01-31 |  | 20d |  | Ram; Elaborators; Priyatam | 552h |
| 109 | 3.2.1.2 | Refine participant management use cases | 23d | 2007-01-01 | 2007-01-31 |  | 20d |  | Ram; Elaborators; Priyatam | 552h |
| 110 | 3.2.1.3 | Refine C3PR integration use cases | 23d | 2007-01-01 | 2007-01-31 |  | 20d |  | Ram; Elaborators; Priyatam | 552h |
| 111 | 3.2.1.4 | Refine PSC use cases | 23d | 2007-01-01 | 2007-01-31 |  | 20d |  | Ram; Elaborators; Priyatam | 552h |
| 112 | 3.2.1.5 | Develop registration use cases | 23d | 2007-01-01 | 2007-01-31 |  | 20d |  | Ram; Elaborators | 368h |
| 113 | 3.2.1.6 | Elaborator review of use case document | 23d | 2007-01-01 | 2007-01-31 |  | 20d |  | Elaborators | 184h |
| 114 | 3.2.2 | SRS document | 23d | 2007-01-01 | 2007-01-31 |  | 20d |  | Ram | 184h |
| 115 | 3.3 | **Analysis and Design** | 33d | 2007-01-01 | 2007-02-14 |  | 10d |  |  | 3056h |
| 116 | 3.3.1 | UML diagrams (task 2.3.2) | 23d | 2007-01-01 | 2007-01-31 |  | 20d |  | Development team | 184h |
| 117 | 3.3.2 | Design document (task 2.4.2) | 23d | 2007-01-01 | 2007-01-31 |  | 20d |  | Development team | 184h |
| 118 | 3.3.3 | Draft architecture guide | 23d | 2007-01-01 | 2007-01-31 |  | 20d |  |  |  |
| 119 | 3.3.4 | **Doman model** | 33d | 2007-01-01 | 2007-02-14 |  | 10d |  | Ram; Priyatam; Ramakrishna | 2688h |
| 120 | 3.3.4.1 | Harmonize C3PR model with BRIDG | 20d | 2007-01-01 | 2007-01-26 |  | 10d | 0d | Ram; Priyatam; Ramakrishna | 480h |
| 121 | 3.3.4.2 | Create registration model | 13d | 2007-01-29 | 2007-02-14 | 120 | 10d |  | Ram; Priyatam; Ramakrishna | 312h |
| 122 | 3.3.4.3 | Revise protocol model (including BRIDG harmonization) | 23d | 2007-01-01 | 2007-01-31 |  | 20d |  | Ram; Priyatam; Ramakrishna | 552h |
| 123 | 3.3.4.4 | Revise participant model (including BRIDG harmonization) | 23d | 2007-01-01 | 2007-01-31 |  | 20d |  | Ram; Priyatam; Ramakrishna | 552h |
| 124 | 3.4 | **Implementation** | 23d | 2007-01-01 | 2007-01-31 |  | 20d |  |  | 3312h |
| 125 | 3.4.1 | **Web interface** | 23d | 2007-01-01 | 2007-01-31 |  | 20d |  |  |  |
| 126 | 3.4.1.1 | Finalize protocol management interface | 23d | 2007-01-01 | 2007-01-31 |  | 20d |  |  |  |
| 127 | 3.4.1.2 | Implement participant management interface | 23d | 2007-01-01 | 2007-01-31 |  | 20d |  |  |  |
| 128 | 3.4.2 | **Enterprise Service Bus** | 23d | 2007-01-01 | 2007-01-31 |  | 20d |  |  | 736h |
| 129 | 3.4.2.1 | Implement participant creation message router | 9d | 2007-01-01 | 2007-01-11 |  | 20d | 0d | Manav; Kruttik | 144h |
| 130 | 3.4.2.2 | Implement participant creation message handler for C3PR | 7d | 2007-01-12 | 2007-01-22 | 129 | 20d | 0d | Manav; Kruttik | 112h |
| 131 | 3.4.2.3 | Implement participant creation message handler for Study Calendar | 7d | 2007-01-23 | 2007-01-31 | 130 | 20d |  | Manav; Kruttik | 112h |
| 132 | 3.4.2.4 | Implement registration change message router | 9d | 2007-01-01 | 2007-01-11 |  | 20d | 0d | Manav; Kruttik | 144h |
| 133 | 3.4.2.5 | Implement registration change message handler for C3PR | 7d | 2007-01-12 | 2007-01-22 | 132 | 20d | 0d | Manav; Kruttik | 112h |
| 134 | 3.4.2.6 | Implement registration change message handler for Study Calendar | 7d | 2007-01-23 | 2007-01-31 | 133 | 20d |  | Manav; Kruttik | 112h |

| ID | WBS | Task | Duration | Start | Finish | Predecessors | Total slack | Resources | Work |
| --- | --- | --- | --- | --- | --- | --- | --- | --- | --- |
| 135 | 3.4.3 | **Grid service** | 23d | 2007-01-01 | 2007-01-31 |  | 20d |  | 368h |
| 136 | 3.4.3.1 | Implement participant creation service | 23d | 2007-01-01 | 2007-01-31 |  | 20d | Manav | 184h |
| 137 | 3.4.3.2 | Implement registration change service | 23d | 2007-01-01 | 2007-01-31 |  | 20d | Manav | 184h |
| 138 | 3.4.4 | **Database** | 23d | 2007-01-01 | 2007-01-31 |  | 20d |  | 1656h |
| 139 | 3.4.4.1 | Update database with protocol model changes | 23d | 2007-01-01 | 2007-01-31 |  | 20d | Ram; Priyatam; Ramakrishna | 552h |
| 140 | 3.4.4.2 | Update database with participant model changes | 23d | 2007-01-01 | 2007-01-31 |  | 20d | Ram; Priyatam; Ramakrishna | 552h |
| 141 | 3.4.4.3 | Implement database with registration model | 23d | 2007-01-01 | 2007-01-31 |  | 20d | Ram; Priyatam; Ramakrishna | 552h |
| 142 | 3.4.5 | **Domain model** | 23d | 2007-01-01 | 2007-01-31 |  | 20d |  |  |
| 143 | 3.4.5.1 | Implement protocol model revisions | 23d | 2007-01-01 | 2007-01-31 |  | 20d |  |  |
| 144 | 3.4.5.2 | Implement participant model | 23d | 2007-01-01 | 2007-01-31 |  | 20d |  |  |
| 145 | 3.4.5.3 | Implement registartion model | 23d | 2007-01-01 | 2007-01-31 |  | 20d |  |  |
| 146 | 3.4.6 | **Security** | 23d | 2007-01-01 | 2007-01-31 |  | 20d | Manav | 552h |
| 147 | 3.4.6.1 | Implement CSM authorization in grid service | 23d | 2007-01-01 | 2007-01-31 |  | 20d | Manav | 184h |
| 148 | 3.4.6.2 | Implement grid grouper | 23d | 2007-01-01 | 2007-01-31 |  | 20d | Manav | 184h |
| 149 | 3.4.7 | **Business logic** | 23d | 2007-01-01 | 2007-01-31 |  | 20d |  |  |
| 150 | 3.4.7.1 | Implement participant creation service | 23d | 2007-01-01 | 2007-01-31 |  | 20d |  |  |
| 151 | 3.4.7.2 | Implement registration change service | 23d | 2007-01-01 | 2007-01-31 |  | 20d |  |  |
| 152 | 3.5 | **Testing** | 23d | 2007-01-01 | 2007-01-31 |  | 0d |  | 552h |
| 153 | 3.5.1 | Create unit tests | 23d | 2007-01-01 | 2007-01-31 |  | 0d | Developers | 184h |
| 154 | 3.5.2 | Test report (task 2.7.3) | 23d | 2007-01-01 | 2007-01-31 |  | 0d | Patrick | 184h |
| 155 | 3.5.3 | Create functional test cases | 23d | 2007-01-01 | 2007-01-31 |  | 0d | Elaborators | 184h |
| 156 | 4 | **Iteration 4** | 20d | 2007-02-01 | 2007-02-28 | 152, 99 | 0d |  |  |
| 157 | 4.1 | **Project Management** | 20d | 2007-02-01 | 2007-02-28 |  | 0d |  |  |
| 158 | 4.1.1 | Update risk matrix | 11d | 2007-02-01 | 2007-02-15 |  | 9d |  |  |
| 159 | 4.1.2 | Update risk matrix | 20d | 2007-02-01 | 2007-02-28 |  | 0d |  |  |
| 160 | 4.1.3 | Monthly report | 20d | 2007-02-01 | 2007-02-28 |  | 0d |  |  |
| 161 | 4.1.4 | Construction and transition phase plan | 20d | 2007-02-01 | 2007-02-28 |  | 0d |  |  |
| 162 | 4.1.5 | Adoption Collaboration Report | 20d | 2007-02-01 | 2007-02-28 |  | 0d |  |  |
| 163 | 4.1.6 | Test plan document | 20d | 2007-02-01 | 2007-02-28 |  | 0d |  |  |

| ID | WBS | Task | Duration | Start | Finish | Total slack |
| --- | --- | --- | --- | --- | --- | --- |
| 164 | 4.2 | **Requirements** | 20d | 2007-02-01 | 2007-02-28 | 0d |
| 165 | 4.2.1 | Use case document | 20d | 2007-02-01 | 2007-02-28 | 0d |
| 166 | 4.2.2 | SRS document | 20d | 2007-02-01 | 2007-02-28 | 0d |
| 167 | 4.3 | **Analysis and Design** | 20d | 2007-02-01 | 2007-02-28 | 0d |
| 168 | 4.3.1 | UML diagrams | 20d | 2007-02-01 | 2007-02-28 | 0d |
| 169 | 4.3.2 | Design document | 20d | 2007-02-01 | 2007-02-28 | 0d |
| 170 | 4.3.3 | Final architecture guide | 20d | 2007-02-01 | 2007-02-28 | 0d |
| 171 | 4.3.4 | Lessons learned | 20d | 2007-02-01 | 2007-02-28 | 0d |
| 172 | 4.4 | **Implementation** | 20d | 2007-02-01 | 2007-02-28 | 0d |
| 173 | 4.4.1 | Prototype code | 20d | 2007-02-01 | 2007-02-28 | 0d |
| 174 | 4.5 | **Testing** | 20d | 2007-02-01 | 2007-02-28 | 0d |
| 175 | 4.5.1 | Test report | 20d | 2007-02-01 | 2007-02-28 | 0d |
